# JC004001

Schedule from MS Project, 2018-06-06 to 2018-09-10.

## Calendars

- Standard: Mon-Fri 08:00-12:00, 13:00-17:00; Sat-Sun off.

## Resources

| Resource |
| --- |
| GraphicDesigner |
| Graphic Designer |
| Mobile Developer |
| ASP.NET Developer |
| .NET Developer |

## Schedule

| ID | WBS | Task | Type | Duration | Start | Finish | Predecessors | Total slack | Resources | Work |
| --- | --- | --- | --- | --- | --- | --- | --- | --- | --- | --- |
| 1 | 1 | **JC004001** |  | 69d | 2018-06-06 08:00 | 2018-09-10 17:00 |  | 0d |  | 536h |
| 2 | 1.1 | **Mobile Application (Arabic / English)** |  | 69d | 2018-06-06 08:00 | 2018-09-10 17:00 |  | 0d |  | 536h |
| 3 | 1.1.1 | Graphic Design |  | 6d | 2018-06-06 08:00 | 2018-06-13 17:00 |  | 12d | Graphic Designer | 48h |
| 4 | 1.1.2 | **Implementation** |  | 56d | 2018-06-14 08:00 | 2018-08-30 17:00 | 3 | 0d |  | 432h |
| 5 | 1.1.2.1 | **Initiation** |  | 2d | 2018-07-02 08:00 | 2018-07-03 17:00 |  | 0d |  |  |
| 6 | 1.1.2.1.1 | Source Code Repo / Team / Framework preparation | manual | 1d | 2018-07-02 08:00 | 2018-07-02 17:00 |  |  |  |  |
| 7 | 1.1.2.1.2 | Project Skeleton | manual | 1d | 2018-07-03 08:00 | 2018-07-03 17:00 | 6 |  |  |  |
| 8 | 1.1.2.2 | **Screens** |  | 29d | 2018-07-04 08:00 | 2018-08-13 17:00 | 7 | 0d |  | 232h |
| 9 | 1.1.2.2.1 | Dashboard/Homepage |  | 3d | 2018-07-04 08:00 | 2018-07-06 17:00 |  | 0d | Mobile Developer | 24h |
| 10 | 1.1.2.2.2 | Categories |  | 2d | 2018-07-09 08:00 | 2018-07-10 17:00 | 9 | 0d | Mobile Developer | 16h |
| 11 | 1.1.2.2.3 | Product List |  | 3d | 2018-07-11 08:00 | 2018-07-13 17:00 | 10 | 0d | Mobile Developer | 24h |
| 12 | 1.1.2.2.4 | Product details |  | 3d | 2018-07-16 08:00 | 2018-07-18 17:00 | 11 | 0d | Mobile Developer | 24h |
| 13 | 1.1.2.2.5 | **Cart** |  | 5d | 2018-07-19 08:00 | 2018-07-25 17:00 | 12 | 0d |  | 40h |
| 14 | 1.1.2.2.5.1 | Cart Display |  | 2d | 2018-07-19 08:00 | 2018-07-20 17:00 |  | 0d | Mobile Developer | 16h |
| 15 | 1.1.2.2.5.2 | Checkout / Order Confirmation |  | 3d | 2018-07-23 08:00 | 2018-07-25 17:00 | 14 | 0d | Mobile Developer | 24h |
| 16 | 1.1.2.2.6 | Wish List |  | 1d | 2018-07-26 08:00 | 2018-07-26 17:00 | 13 | 0d | Mobile Developer | 8h |
| 17 | 1.1.2.2.7 | Addresses |  | 2d | 2018-07-27 08:00 | 2018-07-30 17:00 | 16 | 0d | Mobile Developer | 16h |
| 18 | 1.1.2.2.8 | My Orders |  | 2d | 2018-07-31 08:00 | 2018-08-01 17:00 | 17 | 0d | Mobile Developer | 16h |
| 19 | 1.1.2.2.9 | My Account |  | 2d | 2018-08-02 08:00 | 2018-08-03 17:00 | 18 | 0d | Mobile Developer | 16h |
| 20 | 1.1.2.2.10 | Sign Up |  | 1d | 2018-08-06 08:00 | 2018-08-06 17:00 | 19 | 0d | Mobile Developer | 8h |
| 21 | 1.1.2.2.11 | Case Requests |  | 2d | 2018-08-07 08:00 | 2018-08-08 17:00 | 20 | 0d | Mobile Developer | 16h |
| 22 | 1.1.2.2.12 | Complaint Requests |  | 2d | 2018-08-09 08:00 | 2018-08-10 17:00 | 21 | 0d | Mobile Developer | 16h |
| 23 | 1.1.2.2.13 | Login |  | 1d | 2018-08-13 08:00 | 2018-08-13 17:00 | 22 | 0d | Mobile Developer | 8h |
| 24 | 1.1.2.3 | **Components** |  | 4d | 2018-08-14 08:00 | 2018-08-17 17:00 | 8 | 0d |  | 32h |
| 25 | 1.1.2.3.1 | Navigation Menu |  | 1d | 2018-08-14 08:00 | 2018-08-14 17:00 |  | 0d | Mobile Developer | 8h |
| 26 | 1.1.2.3.2 | Product Tile |  | 1d | 2018-08-15 08:00 | 2018-08-15 17:00 | 25 | 0d | Mobile Developer | 8h |
| 27 | 1.1.2.3.3 | Product List |  | 2d | 2018-08-16 08:00 | 2018-08-17 17:00 | 26 | 0d | Mobile Developer | 16h |

| ID | WBS | Task | Type | Duration | Start | Finish | Predecessors | Total slack | Free slack | Resources | Work |
| --- | --- | --- | --- | --- | --- | --- | --- | --- | --- | --- | --- |
| 28 | 1.1.2.4 | **API Service Consumers** |  | 6d | 2018-08-20 08:00 | 2018-08-27 17:00 | 24 | 0d |  |  | 48h |
| 29 | 1.1.2.4.1 | Login |  | 2h | 2018-08-20 08:00 | 2018-08-20 10:00 |  | 0d |  | Mobile Developer | 2h |
| 30 | 1.1.2.4.2 | Sign Up |  | 4h | 2018-08-20 10:00 | 2018-08-20 15:00 | 29 | 0d |  | Mobile Developer | 4h |
| 31 | 1.1.2.4.3 | GetAllCategories |  | 2h | 2018-08-20 15:00 | 2018-08-20 17:00 | 30 | 0d |  | Mobile Developer | 2h |
| 32 | 1.1.2.4.4 | **Products** |  | 1d | 2018-08-21 08:00 | 2018-08-21 17:00 | 31 | 0d |  |  | 8h |
| 33 | 1.1.2.4.4.1 | GetFeaturedProducts |  | 2h | 2018-08-21 08:00 | 2018-08-21 10:00 |  | 0d |  | Mobile Developer | 2h |
| 34 | 1.1.2.4.4.2 | GetCategoryProducts |  | 2h | 2018-08-21 10:00 | 2018-08-21 12:00 | 33 | 0d |  | Mobile Developer | 2h |
| 35 | 1.1.2.4.4.3 | GetProductDetails |  | 4h | 2018-08-21 13:00 | 2018-08-21 17:00 | 34 | 0d |  | Mobile Developer | 4h |
| 36 | 1.1.2.4.5 | **Cart / Orders** |  | 2d | 2018-08-22 08:00 | 2018-08-23 17:00 | 32 | 0d |  |  | 16h |
| 37 | 1.1.2.4.5.1 | GetCart |  | 4h | 2018-08-22 08:00 | 2018-08-22 12:00 |  | 0d |  | Mobile Developer | 4h |
| 38 | 1.1.2.4.5.2 | GetWishList |  | 2h | 2018-08-22 13:00 | 2018-08-22 15:00 | 37 | 0d |  | Mobile Developer | 2h |
| 39 | 1.1.2.4.5.3 | GetOrders |  | 2h | 2018-08-22 15:00 | 2018-08-22 17:00 | 38 | 0d |  | Mobile Developer | 2h |
| 40 | 1.1.2.4.5.4 | GetOrderDetails |  | 2h | 2018-08-23 08:00 | 2018-08-23 10:00 | 39 | 0d |  | Mobile Developer | 2h |
| 41 | 1.1.2.4.5.5 | ApplyCoupon |  | 2h | 2018-08-23 10:00 | 2018-08-23 12:00 | 40 | 0d |  | Mobile Developer | 2h |
| 42 | 1.1.2.4.5.6 | Checkout |  | 4h | 2018-08-23 13:00 | 2018-08-23 17:00 | 41 | 0d |  | Mobile Developer | 4h |
| 43 | 1.1.2.4.6 | **Addresses** |  | 1d | 2018-08-24 08:00 | 2018-08-24 17:00 | 36 | 0d |  |  | 8h |
| 44 | 1.1.2.4.6.1 | GetAllAddresses |  | 2h | 2018-08-24 08:00 | 2018-08-24 10:00 |  | 0d |  | Mobile Developer | 2h |
| 45 | 1.1.2.4.6.2 | SaveAddress |  | 4h | 2018-08-24 10:00 | 2018-08-24 15:00 | 44 | 0d |  | Mobile Developer | 4h |
| 46 | 1.1.2.4.6.3 | DeleteAddress |  | 2h | 2018-08-24 15:00 | 2018-08-24 17:00 | 45 | 0d |  | Mobile Developer | 2h |
| 47 | 1.1.2.4.7 | **Requests** |  | 1d | 2018-08-27 08:00 | 2018-08-27 17:00 | 43 | 0d |  |  | 8h |
| 48 | 1.1.2.4.7.1 | GetCaseRequests | manual | 2h | 2018-08-27 08:00 | 2018-08-27 10:00 |  |  |  | Mobile Developer | 2h |
| 49 | 1.1.2.4.7.2 | GetComplaintRequests | manual | 2h | 2018-08-27 10:00 | 2018-08-27 12:00 | 48 |  |  | Mobile Developer | 2h |
| 50 | 1.1.2.4.7.3 | SubmitCaseRequest | manual | 2h | 2018-08-27 13:00 | 2018-08-27 15:00 | 49 |  |  | Mobile Developer | 2h |
| 51 | 1.1.2.4.7.4 | SubmitComplaintRequest | manual | 2h | 2018-08-27 15:00 | 2018-08-27 17:00 | 50 |  |  | Mobile Developer | 2h |
| 52 | 1.1.2.5 | RESTful Web API |  | 12d | 2018-06-14 08:00 | 2018-06-29 17:00 | 3 | 38d | 0d | .NET Developer | 96h |
| 53 | 1.1.2.6 | Payment Integration |  | 3d | 2018-08-28 08:00 | 2018-08-30 17:00 | 52, 28, 8 | 0d |  | Mobile Developer | 24h |
| 54 | 1.1.3 | Testing |  | 5d | 2018-08-31 08:00 | 2018-09-06 17:00 | 4 | 0d |  | Mobile Developer | 40h |
| 55 | 1.1.4 | Application Packaging / Upload to Stores |  | 2d | 2018-09-07 08:00 | 2018-09-10 17:00 | 54 | 0d |  | Mobile Developer | 16h |
